# World_Stories_02

Schedule from MS Project, 2014-08-11 to 2015-06-16, A marks actual dates.
3dots

## Calendars

- Standard: Mon-Fri 08:00-12:00, 13:00-17:00; Sat-Sun off.

## Resources

| Resource | Group | Rate |
| --- | --- | --- |
| mim.Armand | Manager | 45 |
| Manager |  |  |
| 3D Artist |  |  |
| 2D Artist |  |  |
| Animator |  |  |
| Developer |  |  |
| Writer |  |  |
| Narator |  |  |
| Musician |  |  |

## Schedule

| ID | WBS | Task | Type | Duration | Start | Finish | Predecessors | Complete | Remaining | Actual start | Total slack | Free slack |
| --- | --- | --- | --- | --- | --- | --- | --- | --- | --- | --- | --- | --- |
| 1 | 1 | **R&D Steps** |  | 7d | 2014-09-24 | 2014-10-02 |  | 20% | 5.6d | 2014-08-11 |  |  |
| 2 | 1.1 | Music (available resources) |  | 1d | 2014-09-24 | 2014-09-24 |  |  |  |  | 6d |  |
| 3 | 1.2 | FBX compatible rigging options (+Unity humanoid) |  | 1d | 2014-08-11 A | 2014-08-11 A | 2 | 100% |  |  |  |  |
| 4 | 1.3 | Engine selection |  | 1d | 2014-08-11 A | 2014-08-11 A | 3 | 100% |  |  |  |  |
| 5 | 1.4 | multiplayer |  | 1d | 2014-09-24 | 2014-09-24 | 4 |  |  |  | 1d | 0d |
| 6 | 1.5 | Native (IOS, Android, WP8) achievement and award system |  | 1d | 2014-09-25 | 2014-09-25 | 5 |  |  |  | 1d | 0d |
| 7 | 1.6 | Architecture/ structure definitions (asset management structure) |  | 1d | 2014-09-26 | 2014-09-26 | 6 |  |  |  | 1d | 0d |
| 8 | 1.7 | Weekly deadline definitions |  | 1d | 2014-09-29 | 2014-09-29 | 7 |  |  |  | 1d | 0d |
| 9 | 1.8 | Preparing of the data sheet of requirements (like size limit, etc.) for each of the platform submissions. |  | 0.5d | 2014-09-30 | 2014-09-30 | 8 |  |  |  | 1d | 0d |
| 10 | 1.9 | Visual effects and real-time render passes available on mobile platforms |  | 0.5d | 2014-09-30 | 2014-09-30 | 9 |  |  |  | 1d | 0d |
| 11 | 1.10 | Copy-right checks |  | 1d | 2014-09-24 | 2014-09-24 |  |  |  |  | 6d |  |
| 12 | 1.11 | In-App purchase |  | 1d | 2014-10-01 | 2014-10-01 | 10 |  |  |  | 1d |  |
| 13 | 2 | **Alpha releases (1 story)** |  | 66.23d | 2014-08-11 A | 2014-11-11 | 1 | 5% | 63.06d |  | 0d |  |
| 14 | 2.1 | **Pre-production** |  | 45.1d | 2014-08-11 A | 2014-10-13 |  | 13% | 39.3d |  | -38.1d | 0d |
| 15 | 2.1.1 | Script |  | 1d | 2014-08-11 A | 2014-10-03 |  | 90% | 0.1d |  | -38.1d | 0d |
| 16 | 2.1.2 | Story boards |  | 1d | 2014-10-03 | 2014-10-06 | 15 |  |  |  | -38.1d | 0d |
| 17 | 2.1.3 | Concept / Mood Paintings |  | 2d | 2014-10-06 | 2014-10-08 | 16 |  |  |  | -38.1d | 0d |
| 18 | 2.1.4 | Animation mockup (2D) |  | 1d | 2014-10-10 | 2014-10-13 | 17, 19 |  |  |  | -38.1d | 0d |
| 19 | 2.1.5 | Music (test) |  | 1d | 2014-10-09 | 2014-10-10 | 20 |  |  |  | -38.1d | 0d |
| 20 | 2.1.6 | Naration (test) |  | 1d | 2014-10-08 | 2014-10-09 | 17 |  |  |  | -38.1d | 0d |
| 21 | 2.1.7 | Trailer (Alpha) | milestone | 0d | 2014-10-13 | 2014-10-13 | 18 |  |  |  | -38.1d | 0d |
| 22 | 2.2 | **Production** |  | 59.23d | 2014-08-20 A | 2014-11-11 | 14 | 3% | 57.51d |  | 0d |  |
| 23 | 2.2.1 | Blueprints |  | 2d | 2014-08-20 A | 2014-10-14 |  | 12% | 1.76d |  | 0d |  |
| 24 | 2.2.2 | 3D Modeling |  | 1d | 2014-08-22 A | 2014-10-15 | 23 | 15% | 0.85d |  | 0d |  |
| 25 | 2.2.3 | UW & Texturing |  | 3d | 2014-08-25 A | 2014-10-20 | 24 | 12% | 2.64d |  | 0d |  |
| 26 | 2.2.4 | Rigging |  | 2d | 2014-08-28 A | 2014-10-22 | 25 | 6% | 1.88d |  | -4d | 0d |
| 27 | 2.2.5 | Animation |  | 1d | 2014-10-22 | 2014-10-23 | 26 |  |  |  | -4d | 0d |

Notes:
- 13: Alpha release will contain only one to two stories / will be available by free (at least one of the stories) / will contain all the nessescary options and the feautures

| ID | WBS | Task | Type | Duration | Start | Finish | Predecessors | Total slack | Free slack |
| --- | --- | --- | --- | --- | --- | --- | --- | --- | --- |
| 28 | 2.2.6 | **Sounds** |  | 3d | 2014-10-13 | 2014-10-16 |  | 17.13d | 5.13d |
| 29 | 2.2.6.1 | Sound fx |  | 1d | 2014-10-13 | 2014-10-14 |  | 17.13d | 0d |
| 30 | 2.2.6.2 | Musics |  | 1d | 2014-10-14 | 2014-10-15 | 29 | 17.13d | 0d |
| 31 | 2.2.6.3 | Narations |  | 1d | 2014-10-15 | 2014-10-16 | 30 | 17.13d |  |
| 32 | 2.2.7 | Trailer release |  | 1d | 2014-10-23 | 2014-10-24 | 27, 28 | 12d |  |
| 33 | 2.2.8 | **Unity dev** |  | 12d | 2014-10-23 | 2014-11-10 | 27 | -4d | 0d |
| 34 | 2.2.8.1 | Game logic |  | 1d | 2014-10-23 | 2014-10-24 |  | -4d | 0d |
| 35 | 2.2.8.2 | Importing assets |  | 1d | 2014-10-24 | 2014-10-27 | 34 | -4d | 0d |
| 36 | 2.2.8.3 | GUI Design + dev |  | 2d | 2014-10-27 | 2014-10-29 | 35 | -4d | 0d |
| 37 | 2.2.8.4 | Programming |  | 7d | 2014-10-29 | 2014-11-07 | 36 | -4d | 0d |
| 38 | 2.2.8.5 | Alpha builds |  | 1d | 2014-11-07 | 2014-11-10 | 37 | -4d | 0d |
| 39 | 2.2.9 | Primary test on devices |  | 1d | 2014-11-10 | 2014-11-11 | 33 | -4d | 0d |
| 40 | 2.2.10 | Debugging | manual | 2d | 2014-09-26 | 2014-09-30 | 39 |  |  |
| 41 | 2.2.11 | Market place submissions |  | 1d | 2014-10-13 | 2014-10-14 | 40 | 19.13d | 0d |
| 42 | 2.2.12 | Debugging / resubmitting | manual | 1d | 2014-10-01 | 2014-10-02 | 41 |  |  |
| 43 | 2.2.13 | Alpha 2 release + Trailler | milestone | 0d | 2014-10-13 | 2014-10-13 | 42 | 21.13d |  |
| 44 | 3 | Project web site |  | 15d | 2014-08-11 | 2014-08-29 |  | 178.23d |  |
| 45 | 4 | **Funds** |  | 19d | 2014-11-11 | 2014-12-08 | 13 | 0d |  |
| 46 | 4.1 | Research, studies, planning |  | 2d | 2014-11-11 | 2014-11-13 |  | 17d |  |
| 47 | 4.2 | **Content creation** |  | 14d | 2014-11-11 | 2014-12-01 |  | 0d |  |
| 48 | 4.2.1 | Text |  | 2d | 2014-11-11 | 2014-11-13 |  | 0d |  |
| 49 | 4.2.2 | Images |  | 3d | 2014-11-13 | 2014-11-18 | 48 | 0d |  |
| 50 | 4.2.3 | Scripts |  | 2d | 2014-11-18 | 2014-11-20 | 49 | 0d |  |
| 51 | 4.2.4 | Filming sessions |  | 2d | 2014-11-20 | 2014-11-24 | 50 | 0d |  |
| 52 | 4.2.5 | FX + Editing |  | 2d | 2014-11-24 | 2014-11-26 | 51 | 0d |  |
| 53 | 4.2.6 | Formatting |  | 2d | 2014-11-26 | 2014-11-28 | 52 | 0d |  |
| 54 | 4.2.7 | Final preparations |  | 1d | 2014-11-28 | 2014-12-01 | 53 | 0d |  |
| 55 | 4.3 | Submitions |  | 2d | 2014-12-01 | 2014-12-03 | 47 | 3d |  |
| 56 | 4.4 | Advertising, social networks, etc |  | 5d | 2014-12-01 | 2014-12-08 | 47 | 0d |  |

Notes:
- 45: Funds aren't nesscescary for the continuation of the project but may faciliate it

| ID | WBS | Task | Type | Duration | Start | Finish | Predecessors | Total slack | Free slack |
| --- | --- | --- | --- | --- | --- | --- | --- | --- | --- |
| 57 | 4.5 | **Private fundings** |  | 11d | 2014-11-11 | 2014-11-26 |  | 8d |  |
| 58 | 4.5.1 | Research & planning |  | 3d | 2014-11-11 | 2014-11-14 |  | 8d | 0d |
| 59 | 4.5.2 | Proposal preparations |  | 5d | 2014-11-14 | 2014-11-21 | 58 | 8d | 0d |
| 60 | 4.5.3 | Submission/ communications |  | 3d | 2014-11-21 | 2014-11-26 | 59 | 8d |  |
| 61 | 5 | Project plan changes & refinments |  | 2d | 2014-12-08 | 2014-12-10 | 45 | 0d |  |
| 62 | 6 | ALPHA PHASE DONE! | milestone | 0d | 2014-12-10 | 2014-12-10 | 61 | 113d | 0d |
| 63 | 7 | **Beta release** |  | 67d | 2014-12-10 | 2015-03-13 | 61 | 0d |  |
| 64 | 7.1 | **Pre-production (3 stories)** |  | 17d | 2014-12-10 | 2015-01-02 |  | 50d |  |
| 65 | 7.1.1 | Script |  | 2d | 2014-12-10 | 2014-12-12 |  | 51d | 0d |
| 66 | 7.1.2 | Story boards |  | 3d | 2014-12-12 | 2014-12-17 | 65 | 51d | 0d |
| 67 | 7.1.3 | Concept / Mood Paintings |  | 6d | 2014-12-17 | 2014-12-25 | 66 | 51d | 1d |
| 68 | 7.1.4 | Animation mockup (2D) |  | 5d | 2014-12-26 | 2015-01-02 | 67, 69 | 50d | 0d |
| 69 | 7.1.5 | Music |  | 6d | 2014-12-18 | 2014-12-26 | 70 | 50d | 0d |
| 70 | 7.1.6 | Naration |  | 6d | 2014-12-10 | 2014-12-18 |  | 50d | 0d |
| 71 | 7.1.7 | Trailer ( Beta ) | milestone | 0d | 2015-01-02 | 2015-01-02 | 68 | 50d |  |
| 72 | 7.2 | **Production** |  | 67d | 2014-12-10 | 2015-03-13 | 14 | 0d |  |
| 73 | 7.2.1 | Blueprints |  | 6d | 2014-12-10 | 2014-12-18 |  | 0d |  |
| 74 | 7.2.2 | 3D Modeling |  | 6d | 2014-12-18 | 2014-12-26 | 73 | 0d |  |
| 75 | 7.2.3 | UW & Texturing |  | 6d | 2014-12-26 | 2015-01-05 | 74 | 0d |  |
| 76 | 7.2.4 | Rigging |  | 6d | 2015-01-05 | 2015-01-13 | 75 | 0d |  |
| 77 | 7.2.5 | Animation |  | 6d | 2015-01-13 | 2015-01-21 | 76 | 0d |  |
| 78 | 7.2.6 | **Sounds** |  | 18d | 2014-12-10 | 2015-01-05 |  | 49d | 12d |
| 79 | 7.2.6.1 | Sound fx |  | 6d | 2014-12-10 | 2014-12-18 |  | 49d | 0d |
| 80 | 7.2.6.2 | Musics |  | 6d | 2014-12-18 | 2014-12-26 | 79 | 49d | 0d |
| 81 | 7.2.6.3 | Narations |  | 6d | 2014-12-26 | 2015-01-05 | 80 | 49d |  |
| 82 | 7.2.7 | Trailer release | milestone | 0d | 2015-01-21 | 2015-01-21 | 77, 78 | 37d |  |

Notes:
- 63: From this phase, according to the results and outcome of the funding steps, planing may change and needs refinments and / or replaning. / Otherwise 3 more stories will be made available in this version anyway.

| ID | WBS | Task | Type | Duration | Start | Finish | Predecessors | Total slack | Free slack |
| --- | --- | --- | --- | --- | --- | --- | --- | --- | --- |
| 83 | 7.2.8 | **Unity dev** |  | 28d | 2015-01-21 | 2015-03-02 | 77 | 0d |  |
| 84 | 7.2.8.1 | Game logic |  | 5d | 2015-01-21 | 2015-01-28 |  | 0d |  |
| 85 | 7.2.8.2 | Importing assets |  | 2d | 2015-01-28 | 2015-01-30 | 84 | 0d |  |
| 86 | 7.2.8.3 | GUI Design + dev |  | 3d | 2015-01-30 | 2015-02-04 | 85 | 0d |  |
| 87 | 7.2.8.4 | Programming |  | 15d | 2015-02-04 | 2015-02-25 | 86 | 0d |  |
| 88 | 7.2.8.5 | Beta builds |  | 3d | 2015-02-25 | 2015-03-02 | 87 | 0d |  |
| 89 | 7.2.9 | Primary test on devices |  | 2d | 2015-03-02 | 2015-03-04 | 83 | 0d |  |
| 90 | 7.2.10 | Debugging |  | 3d | 2015-03-04 | 2015-03-09 | 89 | 0d |  |
| 91 | 7.2.11 | Market place submissions |  | 2d | 2015-03-09 | 2015-03-11 | 90 | 0d |  |
| 92 | 7.2.12 | Debugging / resubmitting |  | 2d | 2015-03-11 | 2015-03-13 | 91 | 0d |  |
| 93 | 7.3 | Beta release + Trailler | milestone | 0d | 2015-03-13 | 2015-03-13 | 72 | 0d |  |
| 94 | 8 | **Side Products** |  | 21d | 2014-12-10 | 2015-01-08 | 62 | 113d |  |
| 95 | 8.1 | Postal & Thank-you cards |  | 21d | 2014-12-10 | 2015-01-08 |  | 113d |  |
| 96 | 8.2 | Stickers |  | 21d | 2014-12-10 | 2015-01-08 |  | 113d |  |
| 97 | 8.3 | Coupons and promotion cards |  | 21d | 2014-12-10 | 2015-01-08 |  | 113d |  |
| 98 | 8.4 | Card-board models |  | 21d | 2014-12-10 | 2015-01-08 |  | 113d |  |
| 99 | 8.5 | Story books (illustrated with game arts) |  | 21d | 2014-12-10 | 2015-01-08 |  | 113d |  |
| 100 | 8.6 | Silk-screen |  | 21d | 2014-12-10 | 2015-01-08 |  | 113d |  |
| 101 | 9 | BETA PHASE DONE! | milestone | 0d | 2015-03-13 | 2015-03-13 | 63 | 67d |  |
| 102 | 10 | **Final Release (V1)** |  | 67d | 2015-03-13 | 2015-06-16 | 63 | 0d |  |
| 103 | 10.1 | **Pre-production (+ 3-6 stories)** |  | 17d | 2015-03-13 | 2015-04-07 |  | 50d |  |
| 104 | 10.1.1 | Script |  | 2d | 2015-03-13 | 2015-03-17 |  | 51d | 0d |
| 105 | 10.1.2 | Story boards |  | 3d | 2015-03-17 | 2015-03-20 | 104 | 51d | 0d |
| 106 | 10.1.3 | Concept / Mood Paintings |  | 6d | 2015-03-20 | 2015-03-30 | 105 | 51d | 1d |
| 107 | 10.1.4 | Animation mockup (2D) |  | 5d | 2015-03-31 | 2015-04-07 | 106, 108 | 50d | 0d |
| 108 | 10.1.5 | Music |  | 6d | 2015-03-23 | 2015-03-31 | 109 | 50d | 0d |
| 109 | 10.1.6 | Naration |  | 6d | 2015-03-13 | 2015-03-23 |  | 50d | 0d |
| 110 | 10.1.7 | Trailer ( Final ) | milestone | 0d | 2015-04-07 | 2015-04-07 | 107 | 50d |  |

| ID | WBS | Task | Type | Duration | Start | Finish | Predecessors | Total slack | Free slack |
| --- | --- | --- | --- | --- | --- | --- | --- | --- | --- |
| 111 | 10.2 | **Production** |  | 67d | 2015-03-13 | 2015-06-16 | 14 | 0d |  |
| 112 | 10.2.1 | Blueprints |  | 6d | 2015-03-13 | 2015-03-23 |  | 0d |  |
| 113 | 10.2.2 | 3D Modeling |  | 6d | 2015-03-23 | 2015-03-31 | 112 | 0d |  |
| 114 | 10.2.3 | UW & Texturing |  | 6d | 2015-03-31 | 2015-04-08 | 113 | 0d |  |
| 115 | 10.2.4 | Rigging |  | 6d | 2015-04-08 | 2015-04-16 | 114 | 0d |  |
| 116 | 10.2.5 | Animation |  | 6d | 2015-04-16 | 2015-04-24 | 115 | 0d |  |
| 117 | 10.2.6 | **Sounds** |  | 18d | 2015-03-13 | 2015-04-08 |  | 49d | 12d |
| 118 | 10.2.6.1 | Sound fx |  | 6d | 2015-03-13 | 2015-03-23 |  | 49d | 0d |
| 119 | 10.2.6.2 | Musics |  | 6d | 2015-03-23 | 2015-03-31 | 118 | 49d | 0d |
| 120 | 10.2.6.3 | Narations |  | 6d | 2015-03-31 | 2015-04-08 | 119 | 49d |  |
| 121 | 10.2.7 | Trailer release | milestone | 0d | 2015-04-24 | 2015-04-24 | 116, 117 | 37d |  |
| 122 | 10.2.8 | **Unity dev** |  | 28d | 2015-04-24 | 2015-06-03 | 116 | 0d |  |
| 123 | 10.2.8.1 | Game logic |  | 5d | 2015-04-24 | 2015-05-01 |  | 0d |  |
| 124 | 10.2.8.2 | Importing assets |  | 2d | 2015-05-01 | 2015-05-05 | 123 | 0d |  |
| 125 | 10.2.8.3 | GUI Design + dev |  | 3d | 2015-05-05 | 2015-05-08 | 124 | 0d |  |
| 126 | 10.2.8.4 | Programming |  | 15d | 2015-05-08 | 2015-05-29 | 125 | 0d |  |
| 127 | 10.2.8.5 | Beta builds |  | 3d | 2015-05-29 | 2015-06-03 | 126 | 0d |  |
| 128 | 10.2.9 | Primary test on devices |  | 2d | 2015-06-03 | 2015-06-05 | 122 | 0d |  |
| 129 | 10.2.10 | Debugging |  | 3d | 2015-06-05 | 2015-06-10 | 128 | 0d |  |
| 130 | 10.2.11 | Market place submissions |  | 2d | 2015-06-10 | 2015-06-12 | 129 | 0d |  |
| 131 | 10.2.12 | Debugging / resubmitting |  | 2d | 2015-06-12 | 2015-06-16 | 130 | 0d |  |
| 132 | 10.3 | Final release + Trailler | milestone | 0d | 2015-06-16 | 2015-06-16 | 111 | 0d |  |
| 133 | 11 | Version 1.0 Done! | milestone | 0d | 2015-06-16 | 2015-06-16 | 102 | 0d |  |
